# ATLAS Radar System Development

Schedule from MS Project, 2025-12-15 to 2026-12-18, scheduled back from the finish, A marks actual dates.

## Calendars

- Standard: Mon-Fri 08:00-12:00, 13:00-17:00; Sat-Sun off.

## Resources

| Resource |
| --- |
| Alice Nguyen |
| Bob Martinez |
| Carol Smith |
| David Lee |
| Eva Johnson |

## Schedule

| ID | WBS | Task | Type | Duration | Start | Finish | Predecessors | Complete | Remaining | Total slack | Resources | Work |
| --- | --- | --- | --- | --- | --- | --- | --- | --- | --- | --- | --- | --- |
| 1 | 2 | SE-01 System Requirements Review (SRR) |  | 240h | 2026-01-05 A | 2026-02-13 |  | 99% | 240h | 0d | Alice Nguyen | 240h |
| 2 | 3 | SE-02 System Design Document |  | 280h | 2026-03-02 | 2026-04-17 | 1 |  |  | 0d | Alice Nguyen | 280h |
| 3 | 4 | SE-03 Interface Control Documents (ICDs) |  | 280h | 2025-12-15 | 2026-01-30 | 1 |  |  | 0d | Alice Nguyen | 280h |
| 4 | 5 | SE-04 CONOPS Development |  | 200h | 2026-11-16 | 2026-12-18 | 1 |  |  | 0d | Alice Nguyen | 200h |
| 5 | 6 | SE-05 Requirements Traceability Matrix |  | 240h | 2026-03-09 | 2026-04-17 | 3 |  |  | 0d | Alice Nguyen | 240h |
| 6 | 7 | SE-06 Preliminary Design Review (PDR) Package |  | 240h | 2026-04-20 | 2026-05-29 | 2, 5 |  |  | 0d | Alice Nguyen | 240h |
| 7 | 8 | SE-07 System Safety Analysis |  | 400h | 2026-10-12 | 2026-12-18 | 3 |  |  | 0d | Alice Nguyen | 400h |
| 8 | 9 | SE-08 Reliability Analysis |  | 240h | 2026-11-09 | 2026-12-18 | 3 |  |  | 0d | Alice Nguyen | 240h |
| 9 | 10 | SE-09 Critical Design Review (CDR) Package |  | 240h | 2026-10-26 | 2026-12-04 | 6 |  |  | 0d | Alice Nguyen | 240h |
| 10 | 11 | SE-10 Verification & Validation Plan |  | 240h | 2026-06-01 | 2026-07-10 | 6 |  |  | 0d | Alice Nguyen | 240h |
| 11 | 12 | HW-01 RF Front End Design |  | 360h | 2026-02-16 | 2026-04-17 | 3 |  |  | 0d | Bob Martinez | 360h |
| 12 | 13 | HW-02 Signal Processing Board Design |  | 400h | 2026-02-02 | 2026-04-10 | 3 |  |  | 0d | Bob Martinez | 400h |
| 13 | 14 | HW-03 Power Supply Design |  | 240h | 2026-11-09 | 2026-12-18 | 3 |  |  | 0d | Bob Martinez | 240h |
| 14 | 15 | HW-04 Antenna Array Design |  | 400h | 2026-04-06 | 2026-06-12 | 3 |  |  | 0d | Bob Martinez | 400h |
| 15 | 16 | HW-05 RF Front End Prototype Fabrication |  | 280h | 2026-04-20 | 2026-06-05 | 11 |  |  | 0d | Bob Martinez | 280h |
| 16 | 17 | HW-06 Signal Processing Board Fabrication |  | 320h | 2026-04-13 | 2026-06-05 | 12 |  |  | 0d | Bob Martinez | 320h |
| 17 | 18 | HW-07 Antenna Array Fabrication |  | 400h | 2026-06-15 | 2026-08-21 | 14 |  |  | 0d | Bob Martinez | 400h |
| 18 | 19 | HW-08 Hardware Unit Testing |  | 280h | 2026-06-08 | 2026-07-24 | 15, 16 |  |  | 0d | Bob Martinez | 280h |
| 19 | 20 | HW-09 Environmental Stress Screening |  | 160h | 2026-07-27 | 2026-08-21 | 18 |  |  | 0d | Bob Martinez | 160h |
| 20 | 21 | HW-10 Hardware Acceptance Test |  | 160h | 2026-08-24 | 2026-09-18 | 19, 17 |  |  | 0d | Bob Martinez | 160h |
| 21 | 22 | SW-01 Software Requirements Specification |  | 240h | 2026-02-16 A | 2026-03-27 | 3 | 99% | 240h | 0d | Carol Smith | 240h |
| 22 | 23 | SW-02 Software Architecture Design |  | 240h | 2026-01-19 | 2026-02-27 | 21 |  |  | 0d | Carol Smith | 240h |
| 23 | 24 | SW-03 Signal Processing Algorithm Development |  | 440h | 2026-03-09 | 2026-05-22 | 22 |  |  | 0d | Carol Smith | 440h |
| 24 | 25 | SW-04 Tracking Algorithm Development |  | 480h | 2026-03-02 | 2026-05-22 | 22 |  |  | 0d | Carol Smith | 480h |
| 25 | 26 | SW-05 User Interface Development |  | 360h | 2026-05-04 | 2026-07-03 | 22 |  |  | 0d | Carol Smith | 360h |
| 26 | 27 | SW-06 Database Design and Implementation |  | 240h | 2026-04-13 | 2026-05-22 | 22 |  |  | 0d | Carol Smith | 240h |
| 27 | 28 | SW-07 Software Unit Testing |  | 240h | 2026-05-25 | 2026-07-03 | 23, 24, 26 |  |  | 0d | Carol Smith | 240h |
| 28 | 29 | SW-08 Software Integration Testing |  | 200h | 2026-07-06 | 2026-08-07 | 27, 25 |  |  | 0d | Carol Smith | 200h |
| 29 | 30 | SW-09 Software Qualification Testing |  | 240h | 2026-08-10 | 2026-09-18 | 28 |  |  | 0d | Carol Smith | 240h |
| 30 | 31 | SW-10 Software Documentation Complete |  | 160h | 2026-11-23 | 2026-12-18 | 28 |  |  | 0d | Carol Smith | 160h |
| 31 | 32 | IT-01 Integration Test Plan |  | 240h | 2026-07-13 | 2026-08-21 | 10 |  |  | 0d | David Lee | 240h |
| 32 | 33 | IT-02 Lab Setup and Calibration |  | 160h | 2026-08-24 | 2026-09-18 | 31 |  |  | 0d | David Lee | 160h |
| 33 | 34 | IT-03 Hardware-Software Integration |  | 200h | 2026-09-21 | 2026-10-23 | 20, 29, 32 |  |  | 0d | David Lee | 200h |
| 34 | 35 | IT-04 System Functional Testing |  | 120h | 2026-11-02 | 2026-11-20 | 33 |  |  | 0d | David Lee | 120h |
| 35 | 36 | IT-05 System Performance Testing |  | 160h | 2026-10-26 | 2026-11-20 | 33 |  |  | 0d | David Lee | 160h |
| 36 | 37 | IT-06 Environmental Testing |  | 80h | 2026-11-23 | 2026-12-04 | 34, 35 |  |  | 0d | David Lee | 80h |
| 37 | 38 | IT-07 Regression Testing |  | 40h | 2026-12-07 | 2026-12-11 | 36 |  |  | 0d | David Lee | 40h |
| 38 | 39 | IT-08 Test Readiness Review |  | 80h | 2026-12-07 | 2026-12-18 | 9, 32 |  |  | 0d | David Lee | 80h |
| 39 | 40 | IT-09 Acceptance Test Procedure Development |  | 160h | 2026-11-16 | 2026-12-11 | 31 |  |  | 0d | David Lee | 160h |
| 40 | 41 | IT-10 System Acceptance Test |  | 40h | 2026-12-14 | 2026-12-18 | 37, 39 |  |  | 0d | David Lee | 40h |
| 41 | 42 | PM-01 Program Management Plan |  | 200h | 2026-01-05 A | 2026-02-06 |  | 99% | 200h | 0d | Eva Johnson | 200h |
| 42 | 43 | PM-02 Risk Management Plan |  | 120h | 2026-01-05 A | 2026-01-23 |  | 99% | 120h | 0d | Eva Johnson | 120h |
| 43 | 44 | PM-03 Monthly Status Reports |  | 1760h | 2026-02-16 | 2026-12-18 | 41 |  |  | 0d | Eva Johnson | 1760h |
| 44 | 45 | PM-04 Earned Value Management Reporting |  | 1760h | 2026-02-16 | 2026-12-18 | 41 |  |  | 0d | Eva Johnson | 1760h |
| 45 | 46 | PM-05 IMS Baseline Maintenance |  | 1800h | 2025-12-15 | 2026-10-23 |  |  |  | 40d | Eva Johnson | 1800h |
| 46 | 47 | PM-06 Subcontractor Management |  | 1400h | 2025-12-15 | 2026-08-14 |  |  |  | 90d | Eva Johnson | 1400h |
| 47 | 48 | PM-07 Configuration Management |  | 1760h | 2025-12-15 | 2026-10-16 |  |  |  | 45d | Eva Johnson | 1760h |
| 48 | 49 | PM-08 Quality Assurance |  | 1760h | 2025-12-15 | 2026-10-16 |  |  |  | 45d | Eva Johnson | 1760h |
| 49 | 50 | PM-09 Customer Coordination Meetings |  | 1880h | 2025-12-15 | 2026-11-06 |  |  |  | 30d | Eva Johnson | 1880h |
| 50 | 51 | PM-10 Data Management |  | 1880h | 2025-12-15 | 2026-11-06 |  |  |  | 30d | Eva Johnson | 1880h |
| 51 | 52 | MS-01 System Requirements Review (SRR) Complete | milestone | 0h | 2026-02-13 A | 2026-02-13 A | 1 | 100% |  |  | Eva Johnson |  |
| 52 | 53 | MS-02 Preliminary Design Review (PDR) Complete | milestone | 0h | 2026-12-18 | 2026-12-18 | 6 |  |  | 0d | Eva Johnson |  |
| 53 | 54 | MS-03 Critical Design Review (CDR) Complete | milestone | 0h | 2026-12-18 | 2026-12-18 | 9 |  |  | 0d | Eva Johnson |  |
| 54 | 55 | MS-04 Test Readiness Review (TRR) Complete | milestone | 0h | 2026-12-18 | 2026-12-18 | 38 |  |  | 0d | Eva Johnson |  |
| 55 | 56 | MS-05 Hardware-Software Integration Complete | milestone | 0h | 2026-12-18 | 2026-12-18 | 33 |  |  | 0d | Eva Johnson |  |
| 56 | 57 | MS-06 System Acceptance Test (SAT) Complete | milestone | 0h | 2026-12-18 | 2026-12-18 | 40 |  |  | 0d | Eva Johnson |  |
| 57 | 58 | MS-07 Program Complete / Delivery | milestone | 0h | 2026-12-18 | 2026-12-18 | 56 |  |  | 0d | Eva Johnson |  |

Notes:
- 1: BLOCKER: Downstream traceability work on SE-05 (RTM) is constrained by open interface requirements in SE-03 sections 46, which are blocked pending RF specifications from Hardware.
- 2: BLOCKER: The remaining 15% depends on HW delivering RF interface specs before the CAM can complete the RF interface sections. / RISK: Same RF spec issue I mentioned it's on HW to deliver. On my end, I've pre-staged the SDD and ICD sections so I can turn them around fast once I have the inputs. The PDR package itself is at 10%, but the bulk of that work is gated on the SDD and ICDs closing out anyway. / What would actually move the needle: get HW to commit to a firm delivery date for the RF specs this week, not end of next week. Every day of slip on their end compresses my turnaround time before the PDR gate.
- 3: BLOCKER: Sections 4 through 6 of the ICD are gated on RF specs that have been previously identified as a blocker. / RISK:
- 4: BLOCKER: CAM is intentionally sequencing CONOPS after RF specs and ICD direction are locked to ensure consistency with interface definitions, creating a self-imposed dependency delay. / RISK:
- 5: BLOCKER: RTM progress is blocked by unfinalized RF interface definitions (ICD not yet closed), preventing traceability of RF-related requirements. / RISK:
- 6: BLOCKER: Substantive PDR package content is blocked on SDD and ICD closure, which are themselves held up by an unresolved RF spec issue. / RISK:
- 7: BLOCKER: ICD approval is pending due to an unresolved RF spec issue, preventing finalization of the hazard analysis that requires confirmed interface definitions. / RISK:
- 8: BLOCKER: Reliability Analysis cannot start until the ICDs are approved due to an RF spec dependency. / RISK:
- 9: BLOCKER: CDR package is blocked by an RF spec dependency cascading through upstream deliverables, and will not progress until the PDR gate closes.
- 10: BLOCKER: V&V Plan is blocked by an upstream RF spec dependency cascading through the RTM and ICDs, which must close out before V&V Plan can begin.
- 11: BLOCKER: Tool license contention on the lab cluster is backing up simulation runs, threatening an early May deadline that would cascade delays through the hardware acceptance chain if unresolved. / RISK: Two options: either procurement gets us two more simulation licenses that's probably a two-week lead time minimum or IT gives us priority queue access on the cluster so our jobs don't get bumped. Priority access is faster, could be done this week if someone makes the call. That's the ask.
- 12: BLOCKER: A key engineer is on medical leave for approximately three weeks, with only partial coverage that is insufficient to maintain the original schedule pace. / RISK:
- 13: BLOCKER: Power Supply Design is blocked upstream by delays on HW-01 and HW-02, which must deliver finalized RF and signal processing specs before this task can start. / RISK:
- 14: BLOCKER: CAM is waiting on updated antenna aperture requirements from Alice's ICD update before the design can be finalized. / RISK:
- 15: BLOCKER: Task is blocked by an unresolved simulation issue in upstream task HW-01, which must clear before fabrication can start. / RISK:
- 16: BLOCKER: Task has not started because it is downstream of HW-02, which is delayed due to a medical leave coverage issue affecting the board design pace.
- 17: BLOCKER: Antenna Array Fabrication cannot start because it is downstream of HW-04 and blocked by an unresolved ICD issue that has left aperture requirements undefined and the design unfinalized.
- 18: BLOCKER: Hardware Unit Testing is blocked by three unresolved upstream issues a simulation problem, a medical leave staffing gap, and an ICD hold all of which must clear before this task can begin.
- 19: BLOCKER: Three upstream blockers cascading from unit testing are preventing Environmental Stress Screening from starting.
- 20: BLOCKER: Three unresolved blockers are holding up Hardware Acceptance Test and will cause the date to slip if any one of them is not resolved.
- 22: BLOCKER: Progress is dependent on hardware interface specs that have not yet been finalized.
- 23: BLOCKER: A hardware interface dependency is slowing progress on Signal Processing Algorithm Development until interface specifications are delivered.
- 24: BLOCKER: Task is waiting on interface definitions from SW-02, expected to close out next week, which is gating further acceleration.
- 25: BLOCKER: UI Development cannot start until SW-02 closes out due to an interface dependency.
- 26: BLOCKER: SW-02 dependency exists but has less impact on this task than on the algorithm work due to greater independence from full interface definitions.
- 27: BLOCKER: Software Unit Testing cannot begin until predecessor coding tasks SW-03, SW-04, SW-05, and SW-06 reach sufficient maturity.
- 28: BLOCKER: SW-08 has a dependency on hardware availability for the integrated test bed, which is a coordination risk with the HW lead.
- 29: BLOCKER: Software Qualification Testing cannot begin until integration testing completes, as it is the last in the testing sequence.
- 31: BLOCKER: IT-01 cannot be formally kicked off because the finalized test requirements documentation from the systems engineering team has not been received.
- 32: BLOCKER: Equipment procurement is pending with no confirmed delivery date for calibration gear, and lab space has not been formally allocated by facilities.
- 33: BLOCKER: Hardware-Software Integration (IT-03) cannot start until IT-01 and IT-02 are both complete.
- 34: BLOCKER: System Functional Testing is blocked because it is downstream of integration, which is itself blocked by previously described issues.
- 35: BLOCKER: Upstream blockers are preventing any progress on System Performance Testing.
- 36: BLOCKER: Upstream blockers (unspecified) are preventing any progress on Environmental Testing.
- 37: BLOCKER: Upstream blockers are preventing any progress on Regression Testing.
- 38: BLOCKER: Upstream blockers are preventing any progress on Test Readiness Review, and the CAM is refusing to continue the interview until baseline planned start dates are provided.
- 39: BLOCKER: Upstream blockers are preventing any progress on Acceptance Test Procedure Development.
- 40: BLOCKER: Upstream blockers (previously described) are preventing any progress on System Acceptance Test.
- 43: BLOCKER: The second report is in draft and cannot be finalized until outstanding inputs are received from several CAMs.
- 44: BLOCKER: EVM reporting is blocked by a subcontractor data issue affecting its inputs.
- 46: BLOCKER: Slow subcontractor data delivery is dragging down percent complete on this task.
